# Tailspin Remote Drone

How a schedule from MS Project changed from version to version. A marks actual dates.

## Version 1 (data date 2019-01-18, saved 2024-07-20, file Tailspin Remote Drone 13A.mpp)

| ID | WBS | Task | Duration | Start | Finish | Predecessors | Complete | Total float | Constraint |
| --- | --- | --- | --- | --- | --- | --- | --- | --- | --- |
| 1 | 1 | **Target Market Research and Analysis** | 31.25d | 2019-01-07 08:00 A | 2019-02-20 10:00 A |  | 100% |  |  |
| 2 | 1.1 | **Research** | 29.75d | 2019-01-07 08:00 A | 2019-02-18 15:00 A |  | 100% |  |  |
| 3 |  | Research begins | 0d | 2019-01-07 08:00 A | 2019-01-07 08:00 A |  | 100% |  |  |
| 4 | 1.1.2 | **Surveys** | 8d | 2019-01-07 08:00 A | 2019-01-16 19:00 A |  | 100% |  |  |
| 5 |  | Develop survey questionnaire | 2.24d | 2019-01-07 08:00 A | 2019-01-08 16:56 A | 3 | 100% |  |  |
| 6 |  | Review and approval of survey | 1h | 2019-01-08 16:56 A | 2019-01-09 08:56 A | 5 | 100% |  |  |
| 7 |  | Conduct survey | 1.2w | 2019-01-09 10:00 A | 2019-01-16 19:00 A | 6 | 100% |  |  |
| 8 | 1.1.3 | **Focus Groups** | 11.88d | 2019-01-09 08:56 A | 2019-01-25 17:00 A |  | 100% |  |  |
| 9 |  | Identify focus group member demographics | 1d | 2019-01-09 08:56 A | 2019-01-10 08:56 A | 6 | 100% |  |  |
| 10 |  | Contact potential focus group members | 5.12d | 2019-01-10 08:56 A | 2019-01-17 09:56 A | 9 | 100% |  |  |
| 11 |  | Conduct focus groups | 1w | 2019-01-14 08:00 A | 2019-01-25 17:00 A | 10 | 100% |  | start no later than 2019-01-14 08:00 |
| 12 | 1.1.4 | **Observations** | 15.75d | 2019-01-28 08:00 A | 2019-02-18 15:00 A |  | 100% |  |  |
| 13 |  | Identify observation parameters | 4h | 2019-01-28 08:00 A | 2019-01-28 12:00 A | 11 | 100% |  |  |
| 14 |  | Select observation locations | 2h | 2019-01-28 13:00 A | 2019-01-28 15:00 A | 13 | 100% |  |  |
| 15 |  | Conduct observations | 3w | 2019-01-28 15:00 A | 2019-02-18 15:00 A | 14 | 100% |  |  |
| 16 |  | Research complete | 0d | 2019-02-18 15:00 A | 2019-02-18 15:00 A | 15 | 100% |  |  |
| 17 | 1.2 | **Analysis** | 16.5d | 2019-01-28 15:00 A | 2019-02-20 10:00 A |  | 100% |  |  |
| 18 |  | Analysis begins | 0d | 2019-01-28 15:00 A | 2019-01-28 15:00 A | 15SS | 100% |  |  |
| 19 | 1.2.2 | **Analysis of Research Data** | 10.5d | 2019-01-28 15:00 A | 2019-02-12 10:00 A |  | 100% |  |  |
| 20 |  | Analyze surveys, focus groups, and observations | 3d | 2019-01-28 15:00 A | 2019-01-31 10:00 A | 18 | 100% |  |  |
| 21 |  | Create follow up actions for secondary research | 1d | 2019-01-31 10:00 A | 2019-02-01 10:00 A | 20 | 100% |  |  |
| 22 |  | Conduct secondary research | 7d | 2019-02-01 10:00 A | 2019-02-12 10:00 A | 21 | 100% |  |  |
| 23 | 1.2.3 | **Report of Research Findings** | 8d | 2019-02-08 10:00 A | 2019-02-20 10:00 A |  | 100% |  |  |
| 24 |  | Compile draft copy of report | 16h | 2019-02-08 10:00 A | 2019-02-12 10:00 A | 22FF | 100% |  |  |
| 25 |  | Draft copy review period | 5d | 2019-02-12 10:00 A | 2019-02-19 10:00 A | 24 | 100% |  |  |
| 26 |  | Review comments and compile final report | 1d | 2019-02-19 10:00 A | 2019-02-20 10:00 A | 25 | 100% |  |  |
| 27 |  | Analysis complete | 0d | 2019-02-20 10:00 A | 2019-02-20 10:00 A | 26 | 100% |  |  |
| 28 | 2 | **Design** | 15.5d | 2019-02-20 10:00 A | 2019-03-13 15:00 |  | 20% | -12.25d |  |
| 29 |  | Design begins | 0d | 2019-02-20 10:00 A | 2019-02-20 10:00 A | 27 | 100% |  |  |
| 30 |  | Research Findings Evaluation | 3d | 2019-02-20 10:00 A | 2019-02-25 12:00 A | 29 | 100% |  |  |
| 31 |  | Design Document | 2d | 2019-02-25 13:00 | 2019-02-27 12:00 | 30 |  | -13d |  |
| 32 |  | Proof of Concept | 2w | 2019-02-27 13:00 | 2019-03-13 12:00 | 31 |  | -13d |  |
| 33 |  | Final Design Selection | 2h | 2019-03-13 13:00 | 2019-03-13 15:00 | 32 |  | -13d |  |
| 34 |  | Design complete | 0d | 2019-03-13 15:00 | 2019-03-13 15:00 | 33 |  | -13d |  |
| 35 | 3 | **Product Development** | 30.25d | 2019-03-13 15:00 | 2019-04-24 17:00 |  |  | -13d |  |
| 36 |  | Product development begins | 0d | 2019-03-13 15:00 | 2019-03-13 15:00 | 34 |  | -13d |  |
| 37 |  | Initial Prototype | 1w | 2019-03-19 14:00 | 2019-03-26 14:00 | 36 |  | -13d |  |
| 38 |  | Internal Testing | 2w | 2019-03-26 14:00 | 2019-04-09 14:00 | 37 |  | -13d |  |
| 39 |  | Raw Materials List | 9h | 2019-04-09 14:00 | 2019-04-10 15:00 | 38 |  | -13d |  |
| 40 |  | Parts Designation | 2.05w | 2019-04-10 15:00 | 2019-04-24 17:00 | 39 |  | -13d |  |
| 41 |  | Product development complete | 0d | 2019-04-24 17:00 | 2019-04-24 17:00 | 40 |  | -13d |  |
| 42 | 4 | **Production Planning** | 12.25d | 2019-04-24 17:00 | 2019-05-13 10:00 |  |  | -13d |  |
| 43 |  | Production planning begins | 0d | 2019-04-24 17:00 | 2019-04-24 17:00 | 41 |  | -13d |  |
| 44 |  | High-level Production Plan | 5d | 2019-04-30 08:00 | 2019-05-06 17:00 | 43 |  | -12.62d |  |
| 45 |  | Resource Planning | 3d | 2019-05-07 08:00 | 2019-05-09 17:00 | 44 |  | -12.62d |  |
| 46 |  | Quality Control Design | 1d | 2019-05-10 08:00 | 2019-05-10 17:00 | 45 |  | -12.62d |  |
| 47 |  | Final Production Plan Approval | 2h | 2019-05-13 08:00 | 2019-05-13 10:00 | 46 |  | -12.62d |  |
| 48 |  | Production planning complete | 0d | 2019-05-13 10:00 | 2019-05-13 10:00 | 47 |  | -12.62d |  |
| 49 | 5 | **Marketing** | 25.12d | 2019-05-13 10:00 | 2019-06-18 11:00 |  |  | -14.38d |  |
| 50 |  | Marketing phase begins | 0d | 2019-05-13 10:00 | 2019-05-13 10:00 | 48 |  | -12.62d |  |
| 51 |  | Marketing Strategy Development | 1.18d | 2019-05-13 10:00 | 2019-05-14 09:24 | 50 |  | -12.62d |  |
| 52 |  | Marketing Plan Development and Approval | 5d | 2019-05-20 08:00 | 2019-05-24 17:00 | 51 |  | -14.38d |  |
| 53 |  | Marketing Materials | 3.08w | 2019-05-28 08:00 | 2019-06-18 11:00 | 52 |  | -14.38d |  |
| 54 |  | Marketing phase complete | 0d | 2019-06-18 11:00 | 2019-06-18 11:00 | 53 |  | -14.38d |  |
| 55 | 6 | **Project Management** | 94.12d | 2019-01-07 08:00 A | 2019-05-20 09:00 |  | 10% | 20.25d |  |
| 56 | 6.1 | **Status Meeting** | 94.12d | 2019-01-07 08:00 A | 2019-05-20 09:00 |  | 10% | 20.25d |  |
| 57 |  | Status Meeting 1 | 1h | 2019-01-07 08:00 A | 2019-01-07 09:00 A |  | 100% |  | start no earlier than 2019-01-07 08:00 |
| 58 |  | Status Meeting 2 | 1h | 2019-01-14 08:00 A | 2019-01-14 09:00 A |  | 100% |  | start no earlier than 2019-01-14 08:00 |
| 59 |  | Status Meeting 3 | 1h | 2019-03-11 08:00 | 2019-03-11 09:00 |  |  | 70.25d | start no earlier than 2019-03-08 17:00 |
| 60 |  | Status Meeting 4 | 1h | 2019-03-11 08:00 | 2019-03-11 09:00 |  |  | 70.25d | start no earlier than 2019-03-08 17:00 |
| 61 |  | Status Meeting 5 | 1h | 2019-03-11 08:00 | 2019-03-11 09:00 |  |  | 70.25d | start no earlier than 2019-03-08 17:00 |
| 62 |  | Status Meeting 6 | 1h | 2019-03-11 08:00 | 2019-03-11 09:00 |  |  | 70.25d | start no earlier than 2019-03-08 17:00 |
| 63 |  | Status Meeting 7 | 1h | 2019-03-11 08:00 | 2019-03-11 09:00 |  |  | 70.25d | start no earlier than 2019-03-08 17:00 |
| 64 |  | Status Meeting 8 | 1h | 2019-03-11 08:00 | 2019-03-11 09:00 |  |  | 70.25d | start no earlier than 2019-03-08 17:00 |
| 65 |  | Status Meeting 9 | 1h | 2019-03-11 08:00 | 2019-03-11 09:00 |  |  | 70.25d | start no earlier than 2019-03-08 17:00 |
| 66 |  | Status Meeting 10 | 1h | 2019-03-11 08:00 | 2019-03-11 09:00 |  |  | 70.25d | start no earlier than 2019-03-11 08:00 |
| 67 |  | Status Meeting 11 | 1h | 2019-03-18 08:00 | 2019-03-18 09:00 |  |  | 65.25d | start no earlier than 2019-03-18 08:00 |
| 68 |  | Status Meeting 12 | 1h | 2019-03-25 08:00 | 2019-03-25 09:00 |  |  | 60.25d | start no earlier than 2019-03-25 08:00 |
| 69 |  | Status Meeting 13 | 1h | 2019-04-01 08:00 | 2019-04-01 09:00 |  |  | 55.25d | start no earlier than 2019-04-01 08:00 |
| 70 |  | Status Meeting 14 | 1h | 2019-04-08 08:00 | 2019-04-08 09:00 |  |  | 50.25d | start no earlier than 2019-04-08 08:00 |

| ID | Task | Duration | Start | Finish | Total float | Constraint |
| --- | --- | --- | --- | --- | --- | --- |
| 71 | Status Meeting 15 | 1h | 2019-04-15 08:00 | 2019-04-15 09:00 | 45.25d | start no earlier than 2019-04-15 08:00 |
| 72 | Status Meeting 16 | 1h | 2019-04-22 08:00 | 2019-04-22 09:00 | 40.25d | start no earlier than 2019-04-22 08:00 |
| 73 | Status Meeting 17 | 1h | 2019-04-29 08:00 | 2019-04-29 09:00 | 35.25d | start no earlier than 2019-04-29 08:00 |
| 74 | Status Meeting 18 | 1h | 2019-05-06 08:00 | 2019-05-06 09:00 | 30.25d | start no earlier than 2019-05-06 08:00 |
| 75 | Status Meeting 19 | 1h | 2019-05-13 08:00 | 2019-05-13 09:00 | 25.25d | start no earlier than 2019-05-13 08:00 |
| 76 | Status Meeting 20 | 1h | 2019-05-20 08:00 | 2019-05-20 09:00 | 20.25d | start no earlier than 2019-05-20 08:00 |

## Version 2 (data date 2019-05-17, saved 2024-07-20, file Tailspin Remote Drone 12.mpp)

Last finish 2019-06-18 → 2019-06-24 (+6d). Complete tasks 23 → 40.

Changed:

| ID | Task | Start | Finish | Duration | Complete | Total float | Other |
| --- | --- | --- | --- | --- | --- | --- | --- |
| 28 | **Design** |  | 2019-03-13 15:00 → 2019-03-26 17:00 A (+13d) | 15.5d → 24.75d | 20% → 100% | -12.25d → none |  |
| 31 | Design Document | 2019-02-25 13:00 A | 2019-02-27 12:00 → 2019-03-12 12:00 A (+13d) |  | 0% → 100% | -13d → none |  |
| 32 | Proof of Concept | 2019-02-27 13:00 → 2019-03-11 08:00 A (+12d) | 2019-03-13 12:00 → 2019-03-22 17:00 A (+9d) |  | 0% → 100% | -13d → none | constraint none → start no earlier than 2019-03-08 17:00; resources Model technician; Maria Hammond; Greg Guzik [50%]; SD Card [0.03 4 GB]; Digital camera → Model technician; Maria Hammond; Greg Guzik; SD Card [0.03 4 GB]; Digital camera |
| 33 | Final Design Selection | 2019-03-13 13:00 → 2019-03-25 08:00 A (+12d) | 2019-03-13 15:00 → 2019-03-26 17:00 A (+13d) | 2h → 2d | 0% → 100% | -13d → none |  |
| 34 | Design complete | 2019-03-13 15:00 → 2019-03-26 17:00 A (+13d) | 2019-03-13 15:00 → 2019-03-26 17:00 A (+13d) |  | 0% → 100% | -13d → none |  |
| 35 | **Product Development** | 2019-03-13 15:00 → 2019-03-26 17:00 A (+13d) | 2019-04-24 17:00 → 2019-05-15 17:00 A (+21d) | 30.25d → 36d | 0% → 100% | -13d → none |  |
| 36 | Product development begins | 2019-03-13 15:00 → 2019-03-26 17:00 A (+13d) | 2019-03-13 15:00 → 2019-03-26 17:00 A (+13d) |  | 0% → 100% | -13d → none |  |
| 37 | Initial Prototype | 2019-03-19 14:00 → 2019-03-27 08:00 A (+8d) | 2019-03-26 14:00 → 2019-04-11 17:00 A (+16d) | 1w → 12d | 0% → 100% | -13d → none |  |
| 38 | Internal Testing | 2019-03-26 14:00 → 2019-04-12 08:00 A (+17d) | 2019-04-09 14:00 → 2019-05-01 17:00 A (+22d) | 2w → 14d | 0% → 100% | -13d → none | constraint none → start no earlier than 2019-03-18 08:00 |
| 39 | Raw Materials List | 2019-04-09 14:00 → 2019-05-02 08:00 A (+23d) | 2019-04-10 15:00 → 2019-05-02 17:00 A (+22d) | 9h → 8h | 0% → 100% | -13d → none |  |
| 40 | Parts Designation | 2019-04-10 15:00 → 2019-05-03 08:00 A (+23d) | 2019-04-24 17:00 → 2019-05-15 17:00 A (+21d) | 2.05w → 1.8w | 0% → 100% | -13d → none |  |
| 41 | Product development complete | 2019-04-24 17:00 → 2019-05-15 17:00 A (+21d) | 2019-04-24 17:00 → 2019-05-15 17:00 A (+21d) |  | 0% → 100% | -13d → none |  |
| 42 | **Production Planning** | 2019-04-24 17:00 → 2019-05-15 17:00 A (+21d) | 2019-05-13 10:00 → 2019-05-30 09:00 (+17d) | 12.25d → 9.12d | 0% → 41% | -13d → 0d |  |
| 43 | Production planning begins | 2019-04-24 17:00 → 2019-05-15 17:00 A (+21d) | 2019-04-24 17:00 → 2019-05-15 17:00 A (+21d) |  | 0% → 100% | -13d → none |  |
| 44 | High-level Production Plan | 2019-04-30 08:00 → 2019-05-16 08:00 A (+16d) | 2019-05-06 17:00 → 2019-05-22 16:00 (+16d) | 5d → 4.88d | 0% → 77% | -12.62d → 0d |  |
| 45 | Resource Planning | 2019-05-07 08:00 → 2019-05-22 16:00 (+15d) | 2019-05-09 17:00 → 2019-05-28 16:00 (+19d) |  |  | -12.62d → 0d |  |
| 46 | Quality Control Design | 2019-05-10 08:00 → 2019-05-28 16:00 (+18d) | 2019-05-10 17:00 → 2019-05-29 16:00 (+19d) |  |  | -12.62d → 0d |  |
| 47 | Final Production Plan Approval | 2019-05-13 08:00 → 2019-05-29 16:00 (+16d) | 2019-05-13 10:00 → 2019-05-30 09:00 (+17d) |  |  | -12.62d → 0d |  |
| 48 | Production planning complete | 2019-05-13 10:00 → 2019-05-30 09:00 (+17d) | 2019-05-13 10:00 → 2019-05-30 09:00 (+17d) |  |  | -12.62d → 0d |  |
| 49 | **Marketing** | 2019-05-13 10:00 → 2019-05-30 09:00 (+17d) | 2019-06-18 11:00 → 2019-06-24 08:24 (+6d) | 25.12d → 16.93d |  | -14.38d → 0d |  |
| 50 | Marketing phase begins | 2019-05-13 10:00 → 2019-05-30 09:00 (+17d) | 2019-05-13 10:00 → 2019-05-30 09:00 (+17d) |  |  | -12.62d → 0d |  |
| 51 | Marketing Strategy Development | 2019-05-13 10:00 → 2019-05-30 09:00 (+17d) | 2019-05-14 09:24 → 2019-05-31 08:24 (+17d) | 1.18d → 1.05d |  | -12.62d → 0d |  |
| 52 | Marketing Plan Development and Approval | 2019-05-20 08:00 → 2019-05-31 08:24 (+11d) | 2019-05-24 17:00 → 2019-06-03 08:24 (+10d) | 5d → 1d |  | -14.38d → 0d |  |
| 53 | Marketing Materials | 2019-05-28 08:00 → 2019-06-03 08:24 (+6d) | 2019-06-18 11:00 → 2019-06-24 08:24 (+6d) | 3.08w → 3w |  | -14.38d → 0d |  |
| 54 | Marketing phase complete | 2019-06-18 11:00 → 2019-06-24 08:24 (+6d) | 2019-06-18 11:00 → 2019-06-24 08:24 (+6d) |  |  | -14.38d → 0d |  |
| 55 | **Project Management** |  |  |  | 10% → 40% | 20.25d → 23.93d |  |
| 56 | **Status Meeting** |  |  |  | 10% → 40% | 20.25d → 23.93d |  |
| 59 | Status Meeting 3 | 2019-03-11 08:00 → 2019-01-22 08:00 A (-48d) | 2019-03-11 09:00 → 2019-01-22 09:00 A (-48d) |  | 0% → 100% | 70.25d → none | constraint start no earlier than 2019-03-08 17:00 → start no earlier than 2019-01-21 08:00 |
| 60 | Status Meeting 4 | 2019-03-11 08:00 → 2019-01-28 08:00 A (-42d) | 2019-03-11 09:00 → 2019-01-28 09:00 A (-42d) |  | 0% → 100% | 70.25d → none | constraint start no earlier than 2019-03-08 17:00 → start no earlier than 2019-01-28 08:00; baseline start 2019-01-28 08:00 → 2019-03-18 08:00; baseline finish 2019-01-28 09:00 → 2019-03-18 09:00 |
| 61 | Status Meeting 5 | 2019-03-11 08:00 → 2019-02-04 08:00 A (-35d) | 2019-03-11 09:00 → 2019-02-04 09:00 A (-35d) |  | 0% → 100% | 70.25d → none | constraint start no earlier than 2019-03-08 17:00 → start no earlier than 2019-02-04 08:00; baseline start 2019-02-04 08:00 → 2019-03-25 08:00; baseline finish 2019-02-04 09:00 → 2019-03-25 09:00 |
| 62 | Status Meeting 6 | 2019-03-11 08:00 → 2019-02-11 08:00 A (-28d) | 2019-03-11 09:00 → 2019-02-11 09:00 A (-28d) |  | 0% → 100% | 70.25d → none | constraint start no earlier than 2019-03-08 17:00 → start no earlier than 2019-02-11 08:00; baseline start 2019-02-11 08:00 → 2019-04-01 08:00; baseline finish 2019-02-11 09:00 → 2019-04-01 09:00 |
| 63 | Status Meeting 7 | 2019-03-11 08:00 → 2019-02-18 08:00 A (-21d) | 2019-03-11 09:00 → 2019-02-18 09:00 A (-21d) |  | 0% → 100% | 70.25d → none | constraint start no earlier than 2019-03-08 17:00 → start no earlier than 2019-02-18 08:00; baseline start 2019-02-18 08:00 → 2019-04-08 08:00; baseline finish 2019-02-18 09:00 → 2019-04-08 09:00 |
| 64 | Status Meeting 8 | 2019-03-11 08:00 → 2019-02-25 08:00 A (-14d) | 2019-03-11 09:00 → 2019-02-25 09:00 A (-14d) |  | 0% → 100% | 70.25d → none | constraint start no earlier than 2019-03-08 17:00 → start no earlier than 2019-02-25 08:00; baseline start 2019-02-25 08:00 → 2019-04-15 08:00; baseline finish 2019-02-25 09:00 → 2019-04-15 09:00 |
| 65 | Status Meeting 9 | 2019-03-11 08:00 → 2019-03-04 08:00 (-7d) | 2019-03-11 09:00 → 2019-03-04 09:00 (-7d) |  |  | 70.25d → 79.88d | constraint start no earlier than 2019-03-08 17:00 → start no earlier than 2019-03-04 08:00; baseline start 2019-03-04 08:00 → 2019-04-22 08:00; baseline finish 2019-03-04 09:00 → 2019-04-22 09:00 |
| 66 | Status Meeting 10 |  |  |  |  | 70.25d → 74.88d | baseline start 2019-03-11 08:00 → 2019-04-29 08:00; baseline finish 2019-03-11 09:00 → 2019-04-29 09:00 |
| 67 | Status Meeting 11 |  |  |  |  | 65.25d → 69.88d | baseline start 2019-03-18 08:00 → 2019-05-06 08:00; baseline finish 2019-03-18 09:00 → 2019-05-06 09:00 |
| 68 | Status Meeting 12 |  |  |  |  | 60.25d → 64.88d | baseline start 2019-03-25 08:00 → 2019-05-13 08:00; baseline finish 2019-03-25 09:00 → 2019-05-13 09:00 |
| 69 | Status Meeting 13 |  |  |  |  | 55.25d → 59.88d | baseline start 2019-04-01 08:00 → 2019-05-20 08:00; baseline finish 2019-04-01 09:00 → 2019-05-20 09:00 |
| 70 | Status Meeting 14 |  |  |  |  | 50.25d → 54.88d | resources Brad Sutton; Eva Corets; Jane Clayton; Judy Lew; Florian Voss → none; baseline start 2019-04-08 08:00 → none; baseline finish 2019-04-08 09:00 → none |
| 71 | Status Meeting 15 |  |  |  |  | 45.25d → 49.88d | resources Brad Sutton; Eva Corets; Jane Clayton; Judy Lew; Florian Voss → none; baseline start 2019-04-15 08:00 → none; baseline finish 2019-04-15 09:00 → none |
| 72 | Status Meeting 16 |  |  |  |  | 40.25d → 44.88d | resources Brad Sutton; Eva Corets; Jane Clayton; Judy Lew; Florian Voss → none; baseline start 2019-04-22 08:00 → none; baseline finish 2019-04-22 09:00 → none |
| 73 | Status Meeting 17 |  |  |  |  | 35.25d → 39.88d | resources Brad Sutton; Eva Corets; Jane Clayton; Judy Lew; Florian Voss → none; baseline start 2019-04-29 08:00 → none; baseline finish 2019-04-29 09:00 → none |
| 74 | Status Meeting 18 |  |  |  |  | 30.25d → 34.88d | resources Brad Sutton; Eva Corets; Jane Clayton; Judy Lew; Florian Voss → none; baseline start 2019-05-06 08:00 → none; baseline finish 2019-05-06 09:00 → none |
| 75 | Status Meeting 19 |  |  |  |  | 25.25d → 29.88d | resources Brad Sutton; Eva Corets; Jane Clayton; Judy Lew; Florian Voss → none; baseline start 2019-05-13 08:00 → none; baseline finish 2019-05-13 09:00 → none |
| 76 | Status Meeting 20 |  |  |  |  | 20.25d → 24.88d | resources Brad Sutton; Eva Corets; Jane Clayton; Judy Lew; Florian Voss → none; baseline start 2019-05-20 08:00 → none; baseline finish 2019-05-20 09:00 → none |
